# MAS_20130618

Schedule from MS Project, 2017-02-01 to 2017-12-18, A marks actual dates.

## Calendars

- 표준: Mon-Fri 08:00-12:00, 13:00-17:00; Sat-Sun off.

## Resources

| Resource |
| --- |
| 신효섭 |
| 한상민 |

## Schedule

| ID | WBS | Task | Duration | Start | Finish | Predecessors | Complete | Remaining | Total slack | Free slack | Constraint | Work | Actual work |
| --- | --- | --- | --- | --- | --- | --- | --- | --- | --- | --- | --- | --- | --- |
| 1 | 1 | 개발툴 선정 | 10d | 2017-02-01 | 2017-02-14 |  |  |  | 219d |  | start no earlier than 2017-02-01 | 40h |  |
| 2 | 2 | 개발계획서 작성 | 10d | 2017-02-16 A | 2017-03-01 A | 1 | 100% |  |  |  |  | 40h | 40h |
| 3 | 3 | **Nublcom USB Protect 개발** | 147d | 2017-03-02 A | 2017-09-22 | 2 | 9% | 133.22d | 15d |  |  |  |  |
| 4 | 3.1 | 암호화 알고리즘 개발 | 10d | 2017-03-02 | 2017-03-15 | 2 |  |  | 17d | 0d |  |  |  |
| 5 | 3.2 | Install 프로그램 개발 | 30d | 2017-03-16 | 2017-04-26 | 4 |  |  | 17d | 0d |  |  |  |
| 6 | 3.3 | USB Eject 로틴 개발 | 20d | 2017-04-24 A | 2017-05-19 | 5 | 25% | 15d | 15d | 0d |  |  |  |
| 7 | 3.4 | Safe USB 검증 루틴 개발 | 20d | 2017-05-01 A | 2017-06-02 | 6 | 50% | 10d | 15d | 0d |  |  |  |
| 8 | 3.5 | 일반 USB 장비인지 검증 루틴 개발 | 20d | 2017-06-05 | 2017-06-30 | 7 |  |  | 15d | 0d |  |  |  |
| 9 | 3.6 | 서비스 중지 방지 루틴 개발 | 30d | 2017-07-03 | 2017-08-11 | 8 |  |  | 15d | 0d |  |  |  |
| 10 | 3.7 | 서비스 삭제 방지 루틴 개발 | 30d | 2017-08-14 | 2017-09-22 | 9 |  |  | 15d | 0d |  |  |  |
| 11 | 4 | Alpha Test | 20d | 2017-09-25 A | 2017-10-20 | 10 | 75% | 5d | 0d |  |  | 40h | 20h |
| 12 | 5 | Alpha Debugging | 10d | 2017-10-23 | 2017-11-03 | 11 |  |  | 0d |  |  | 40h |  |
| 13 | 6 | Beta Test | 20d | 2017-11-06 | 2017-12-01 | 12 |  |  | 0d |  |  | 24h |  |
| 14 | 7 | Beta Debugging | 10d | 2017-12-04 | 2017-12-15 | 13 |  |  | 0d |  |  | 24h |  |
| 15 | 8 | Release | 1d | 2017-12-18 | 2017-12-18 | 14 |  |  | 0d |  |  | 8h |  |
